# Office Remodel 11-1

How a schedule from MS Project changed from version to version. A marks actual dates.

## Version 1 (saved 2024-07-09, file Office Remodel Actuals.mpp)

| ID | WBS | Task | Duration | Start | Finish | Predecessors | Complete | Total float |
| --- | --- | --- | --- | --- | --- | --- | --- | --- |
| 1 | 1 | **Prep** | 0.5d | 2019-01-28 A | 2019-01-28 A |  | 100% |  |
| 2 |  | Remove existing furniture | 0.5d | 2019-01-28 A | 2019-01-28 A |  | 100% |  |
| 3 |  | Remove existing appliances | 0.5d | 2019-01-28 A | 2019-01-28 A |  | 100% |  |
| 4 | 2 | **Demolition** | 5d | 2019-01-28 A | 2019-02-04 A |  | 100% |  |
| 5 |  | Remove existing ceiling | 1d | 2019-01-28 A | 2019-01-29 A | 2, 3 | 100% |  |
| 6 |  | Tear out inside dividing walls | 2d | 2019-01-29 A | 2019-01-31 A | 5 | 100% |  |
| 7 |  | Remove drywall from main walls | 2d | 2019-01-31 A | 2019-02-04 A | 6 | 100% |  |
| 8 | 3 | **Construction** | 520.5d | 2017-02-19 A | 2019-02-18 |  | 93% | 0d |
| 9 |  | Install interior stud walls | 3d | 2019-02-04 A | 2019-02-07 A | 7 | 100% |  |
| 10 |  | Re-run electrical in all stud walls | 1d | 2019-02-07 A | 2019-02-18 A | 9 | 100% |  |
| 11 |  | Re-run plumbing for sink and icemaker | 1d | 2019-02-07 A | 2019-02-18 A | 9 | 100% |  |
| 12 |  | Install drywall | 5d | 2017-02-19 A | 2017-02-25 A | 10, 11 | 100% |  |
| 13 |  | Install ceiling grid | 4d | 2017-02-27 A | 2017-03-02 A | 12 | 100% |  |
| 14 |  | Install ceiling tile | 1d | 2017-03-03 | 2017-03-03 | 13 |  | 496.5d |
| 15 | 4 | **Finishing Work** | 13.5d | 2017-03-06 | 2017-03-23 |  |  | 496.5d |
| 16 |  | Paint walls and woodwork | 8d | 2017-03-06 | 2017-03-15 | 14 |  | 496.5d |
| 17 |  | Install new floor tile | 3d | 2017-03-16 | 2017-03-20 | 16 |  | 496.5d |
| 18 |  | Re-install appliances | 1d | 2017-03-21 | 2017-03-21 | 17 |  | 496.5d |
| 19 |  | Final cleaning | 1d | 2017-03-22 | 2017-03-22 | 18 |  | 496.5d |
| 20 |  | Re-install furniture | 0.5d | 2017-03-23 | 2017-03-23 | 19 |  | 496.5d |

## Version 2 (saved 2024-07-09, file Office Remodel Painting Adjusted.mpp)

Last finish 2019-02-18 → 2019-03-18 (+28d). Complete tasks 10 → 11.

Changed:

| ID | Task | Start | Finish | Duration | Complete | Total float | Other |
| --- | --- | --- | --- | --- | --- | --- | --- |
| 8 | **Construction** | 2017-02-19 A → 2019-02-04 A (+715d) | 2019-02-18 → 2019-03-01 A (+11d) | 520.5d → 19.5d | 93% → 100% | 0d → none |  |
| 12 | Install drywall | 2017-02-19 A → 2019-02-17 A (+728d) | 2017-02-25 A → 2019-02-23 A (+728d) |  |  |  | constraint none → start no earlier than 2019-02-15 |
| 13 | Install ceiling grid | 2017-02-27 A → 2019-02-25 A (+728d) | 2017-03-02 A → 2019-02-28 A (+728d) |  |  |  |  |
| 14 | Install ceiling tile | 2017-03-03 → 2019-03-01 A (+728d) | 2017-03-03 → 2019-03-01 A (+728d) |  | 0% → 100% | 496.5d → none |  |
| 15 | **Finishing Work** | 2017-03-06 → 2019-03-04 (+728d) | 2017-03-23 → 2019-03-18 (+725d) | 13.5d → 10.5d |  | 496.5d → 0d |  |
| 16 | Paint walls and woodwork | 2017-03-06 → 2019-03-04 (+728d) | 2017-03-15 → 2019-03-08 (+723d) | 8d → 5d |  | 496.5d → 0d |  |
| 17 | Install new floor tile | 2017-03-16 → 2019-03-11 (+725d) | 2017-03-20 → 2019-03-13 (+723d) |  |  | 496.5d → 0d |  |
| 18 | Re-install appliances | 2017-03-21 → 2019-03-14 (+723d) | 2017-03-21 → 2019-03-14 (+723d) |  |  | 496.5d → 0d |  |
| 19 | Final cleaning | 2017-03-22 → 2019-03-15 (+723d) | 2017-03-22 → 2019-03-15 (+723d) |  |  | 496.5d → 0d |  |
| 20 | Re-install furniture | 2017-03-23 → 2019-03-18 (+725d) | 2017-03-23 → 2019-03-18 (+725d) |  |  | 496.5d → 0d |  |
