# Tailspin Remote Drone

How a schedule from MS Project changed from version to version. A marks actual dates.

## Version 1 (data date 2019-02-25, saved 2016-08-06, file Tailspin Remote Drone 11MB.mpp)

| ID | WBS | Task | Duration | Start | Finish | Predecessors | Complete | Total float | Constraint |
| --- | --- | --- | --- | --- | --- | --- | --- | --- | --- |
| 1 | 1 | **Target Market Research and Analysis** | 31.25d | 2019-01-07 08:00 A | 2019-02-20 10:00 A |  | 100% |  |  |
| 2 | 1.1 | **Research** | 29.75d | 2019-01-07 08:00 A | 2019-02-18 15:00 A |  | 100% |  |  |
| 3 |  | Research begins | 0d | 2019-01-07 08:00 A | 2019-01-07 08:00 A |  | 100% |  |  |
| 4 | 1.1.2 | **Surveys** | 8d | 2019-01-07 08:00 A | 2019-01-16 19:00 A |  | 100% |  |  |
| 5 |  | Develop survey questionnaire | 2.24d | 2019-01-07 08:00 A | 2019-01-08 16:56 A | 3 | 100% |  |  |
| 6 |  | Review and approval of survey | 1h | 2019-01-08 16:56 A | 2019-01-09 08:56 A | 5 | 100% |  |  |
| 7 |  | Conduct survey | 1.2w | 2019-01-09 10:00 A | 2019-01-16 19:00 A | 6 | 100% |  |  |
| 8 | 1.1.3 | **Focus Groups** | 11.88d | 2019-01-09 08:56 A | 2019-01-25 17:00 A |  | 100% |  |  |
| 9 |  | Identify focus group member demographics | 1d | 2019-01-09 08:56 A | 2019-01-10 08:56 A | 6 | 100% |  |  |
| 10 |  | Contact potential focus group members | 5.12d | 2019-01-10 08:56 A | 2019-01-17 09:56 A | 9 | 100% |  |  |
| 11 |  | Conduct focus groups | 1w | 2019-01-14 08:00 A | 2019-01-25 17:00 A | 10 | 100% |  | start no later than 2019-01-14 08:00 |
| 12 | 1.1.4 | **Observations** | 15.75d | 2019-01-28 08:00 A | 2019-02-18 15:00 A |  | 100% |  |  |
| 13 |  | Identify observation parameters | 4h | 2019-01-28 08:00 A | 2019-01-28 12:00 A | 11 | 100% |  |  |
| 14 |  | Select observation locations | 2h | 2019-01-28 13:00 A | 2019-01-28 15:00 A | 13 | 100% |  |  |
| 15 |  | Conduct observations | 3w | 2019-01-28 15:00 A | 2019-02-18 15:00 A | 14 | 100% |  |  |
| 16 |  | Research complete | 0d | 2019-02-18 15:00 A | 2019-02-18 15:00 A | 15 | 100% |  |  |
| 17 | 1.2 | **Analysis** | 16.5d | 2019-01-28 15:00 A | 2019-02-20 10:00 A |  | 100% |  |  |
| 18 |  | Analysis begins | 0d | 2019-01-28 15:00 A | 2019-01-28 15:00 A | 15SS | 100% |  |  |
| 19 | 1.2.2 | **Analysis of Research Data** | 10.5d | 2019-01-28 15:00 A | 2019-02-12 10:00 A |  | 100% |  |  |
| 20 |  | Analyze surveys, focus groups, and observations | 3d | 2019-01-28 15:00 A | 2019-01-31 10:00 A | 18 | 100% |  |  |
| 21 |  | Create follow up actions for secondary research | 1d | 2019-01-31 10:00 A | 2019-02-01 10:00 A | 20 | 100% |  |  |
| 22 |  | Conduct secondary research | 7d | 2019-02-01 10:00 A | 2019-02-12 10:00 A | 21 | 100% |  |  |
| 23 | 1.2.3 | **Report of Research Findings** | 8d | 2019-02-08 10:00 A | 2019-02-20 10:00 A |  | 100% |  |  |
| 24 |  | Compile draft copy of report | 16h | 2019-02-08 10:00 A | 2019-02-12 10:00 A | 22FF | 100% |  |  |
| 25 |  | Draft copy review period | 5d | 2019-02-12 10:00 A | 2019-02-19 10:00 A | 24 | 100% |  |  |
| 26 |  | Review comments and compile final report | 1d | 2019-02-19 10:00 A | 2019-02-20 10:00 A | 25 | 100% |  |  |
| 27 |  | Analysis complete | 0d | 2019-02-20 10:00 A | 2019-02-20 10:00 A | 26 | 100% |  |  |
| 28 | 2 | **Design** | 24.75d | 2019-02-20 10:00 A | 2019-03-26 17:00 A |  | 100% |  |  |
| 29 |  | Design begins | 0d | 2019-02-20 10:00 A | 2019-02-20 10:00 A | 27 | 100% |  |  |
| 30 |  | Research Findings Evaluation | 3d | 2019-02-20 10:00 A | 2019-02-25 12:00 A | 29 | 100% |  |  |
| 31 |  | Design Document | 2d | 2019-02-25 13:00 A | 2019-03-12 12:00 A | 30 | 100% |  |  |
| 32 |  | Proof of Concept | 2w | 2019-03-11 08:00 A | 2019-03-22 17:00 A | 31 | 100% |  | start no earlier than 2019-03-08 17:00 |
| 33 |  | Final Design Selection | 2d | 2019-03-25 08:00 A | 2019-03-26 17:00 A | 32 | 100% |  |  |
| 34 |  | Design complete | 0d | 2019-03-26 17:00 A | 2019-03-26 17:00 A | 33 | 100% |  |  |
| 35 | 3 | **Product Development** | 36d | 2019-03-26 17:00 A | 2019-05-15 17:00 A |  | 100% |  |  |
| 36 |  | Product development begins | 0d | 2019-03-26 17:00 A | 2019-03-26 17:00 A | 34 | 100% |  |  |
| 37 |  | Initial Prototype | 12d | 2019-03-27 08:00 A | 2019-04-11 17:00 A | 36 | 100% |  |  |
| 38 |  | Internal Testing | 14d | 2019-04-12 08:00 A | 2019-05-01 17:00 A | 37 | 100% |  | start no earlier than 2019-03-18 08:00 |
| 39 |  | Raw Materials List | 8h | 2019-05-02 08:00 A | 2019-05-02 17:00 A | 38 | 100% |  |  |
| 40 |  | Parts Designation | 1.8w | 2019-05-03 08:00 A | 2019-05-15 17:00 A | 39 | 100% |  |  |
| 41 |  | Product development complete | 0d | 2019-05-15 17:00 A | 2019-05-15 17:00 A | 40 | 100% |  |  |
| 42 | 4 | **Production Planning** | 9.25d | 2019-05-15 17:00 A | 2019-05-30 10:00 |  |  | 0d |  |
| 43 |  | Production planning begins | 0d | 2019-05-15 17:00 A | 2019-05-15 17:00 A | 41 | 100% |  |  |
| 44 |  | High-level Production Plan | 5d | 2019-05-16 08:00 | 2019-05-22 17:00 | 43 |  | -0.17d |  |
| 45 |  | Resource Planning | 3d | 2019-05-23 08:00 | 2019-05-28 17:00 | 44 |  | -0.17d |  |
| 46 |  | Quality Control Design | 1d | 2019-05-29 08:00 | 2019-05-29 17:00 | 45 |  | -0.17d |  |
| 47 |  | Final Production Plan Approval | 2h | 2019-05-30 08:00 | 2019-05-30 10:00 | 46 |  | -0.17d |  |
| 48 |  | Production planning complete | 0d | 2019-05-30 10:00 | 2019-05-30 10:00 | 47 |  | -0.17d |  |
| 49 | 5 | **Marketing** | 17.75d | 2019-05-30 10:00 | 2019-06-24 17:00 |  |  | 0d |  |
| 50 |  | Marketing phase begins | 0d | 2019-05-30 10:00 | 2019-05-30 10:00 | 48 |  | -0.17d |  |
| 51 |  | Marketing Strategy Development | 1.18d | 2019-05-30 10:00 | 2019-06-03 08:00 | 50 |  | -1d |  |
| 52 |  | Marketing Plan Development and Approval | 1d | 2019-06-03 08:00 | 2019-06-03 17:00 | 51 |  | -1d |  |
| 53 |  | Marketing Materials | 3w | 2019-06-04 08:00 | 2019-06-24 17:00 | 52 |  | -1d |  |
| 54 |  | Marketing phase complete | 0d | 2019-06-24 17:00 | 2019-06-24 17:00 | 53 |  | 0d |  |
| 55 | 6 | **Project Management** | 94.12d | 2019-01-07 08:00 A | 2019-05-20 09:00 |  | 40% | 24.88d |  |
| 56 | 6.1 | **Status Meeting** | 94.12d | 2019-01-07 08:00 A | 2019-05-20 09:00 |  | 40% | 24.88d |  |
| 57 |  | Status Meeting 1 | 1h | 2019-01-07 08:00 A | 2019-01-07 09:00 A |  | 100% |  | start no earlier than 2019-01-07 08:00 |
| 58 |  | Status Meeting 2 | 1h | 2019-01-14 08:00 A | 2019-01-14 09:00 A |  | 100% |  | start no earlier than 2019-01-14 08:00 |
| 59 |  | Status Meeting 3 | 1h | 2019-01-22 08:00 A | 2019-01-22 09:00 A |  | 100% |  | start no earlier than 2019-01-21 08:00 |
| 60 |  | Status Meeting 4 | 1h | 2019-01-28 08:00 A | 2019-01-28 09:00 A |  | 100% |  | start no earlier than 2019-01-28 08:00 |
| 61 |  | Status Meeting 5 | 1h | 2019-02-04 08:00 A | 2019-02-04 09:00 A |  | 100% |  | start no earlier than 2019-02-04 08:00 |
| 62 |  | Status Meeting 6 | 1h | 2019-02-11 08:00 A | 2019-02-11 09:00 A |  | 100% |  | start no earlier than 2019-02-11 08:00 |
| 63 |  | Status Meeting 7 | 1h | 2019-02-18 08:00 A | 2019-02-18 09:00 A |  | 100% |  | start no earlier than 2019-02-18 08:00 |
| 64 |  | Status Meeting 8 | 1h | 2019-02-25 08:00 A | 2019-02-25 09:00 A |  | 100% |  | start no earlier than 2019-02-25 08:00 |
| 65 |  | Status Meeting 9 | 1h | 2019-03-04 08:00 | 2019-03-04 09:00 |  |  | 79.88d | start no earlier than 2019-03-04 08:00 |
| 66 |  | Status Meeting 10 | 1h | 2019-03-11 08:00 | 2019-03-11 09:00 |  |  | 74.88d | start no earlier than 2019-03-11 08:00 |
| 67 |  | Status Meeting 11 | 1h | 2019-03-18 08:00 | 2019-03-18 09:00 |  |  | 69.88d | start no earlier than 2019-03-18 08:00 |
| 68 |  | Status Meeting 12 | 1h | 2019-03-25 08:00 | 2019-03-25 09:00 |  |  | 64.88d | start no earlier than 2019-03-25 08:00 |
| 69 |  | Status Meeting 13 | 1h | 2019-04-01 08:00 | 2019-04-01 09:00 |  |  | 59.88d | start no earlier than 2019-04-01 08:00 |
| 70 |  | Status Meeting 14 | 1h | 2019-04-08 08:00 | 2019-04-08 09:00 |  |  | 54.88d | start no earlier than 2019-04-08 08:00 |

| ID | Task | Duration | Start | Finish | Total float | Constraint |
| --- | --- | --- | --- | --- | --- | --- |
| 71 | Status Meeting 15 | 1h | 2019-04-15 08:00 | 2019-04-15 09:00 | 49.88d | start no earlier than 2019-04-15 08:00 |
| 72 | Status Meeting 16 | 1h | 2019-04-22 08:00 | 2019-04-22 09:00 | 44.88d | start no earlier than 2019-04-22 08:00 |
| 73 | Status Meeting 17 | 1h | 2019-04-29 08:00 | 2019-04-29 09:00 | 39.88d | start no earlier than 2019-04-29 08:00 |
| 74 | Status Meeting 18 | 1h | 2019-05-06 08:00 | 2019-05-06 09:00 | 34.88d | start no earlier than 2019-05-06 08:00 |
| 75 | Status Meeting 19 | 1h | 2019-05-13 08:00 | 2019-05-13 09:00 | 29.88d | start no earlier than 2019-05-13 08:00 |
| 76 | Status Meeting 20 | 1h | 2019-05-20 08:00 | 2019-05-20 09:00 | 24.88d | start no earlier than 2019-05-20 08:00 |

## Version 2 (data date 2019-05-17, saved 2024-07-09, file Remote Drone Adjusted.mpp)

Last finish 2019-06-24 → 2019-06-19 (-5d). Complete tasks 40 → 47.

Changed:

| ID | Task | Start | Finish | Duration | Complete | Total float |
| --- | --- | --- | --- | --- | --- | --- |
| 42 | **Production Planning** |  | 2019-05-30 10:00 → 2019-05-24 10:00 A (-6d) | 9.25d → 6.25d | 0% → 100% | 0d → none |
| 44 | High-level Production Plan | 2019-05-16 08:00 A | 2019-05-22 17:00 → 2019-05-22 16:00 A | 5d → 4.88d | 0% → 100% | -0.17d → none |
| 45 | Resource Planning | 2019-05-23 08:00 → 2019-05-21 08:00 A (-2d) | 2019-05-28 17:00 → 2019-05-22 17:00 A (-6d) | 3d → 2d | 0% → 100% | -0.17d → none |
| 46 | Quality Control Design | 2019-05-29 08:00 → 2019-05-23 08:00 A (-6d) | 2019-05-29 17:00 → 2019-05-23 17:00 A (-6d) |  | 0% → 100% | -0.17d → none |
| 47 | Final Production Plan Approval | 2019-05-30 08:00 → 2019-05-24 08:00 A (-6d) | 2019-05-30 10:00 → 2019-05-24 10:00 A (-6d) |  | 0% → 100% | -0.17d → none |
| 48 | Production planning complete | 2019-05-30 10:00 → 2019-05-24 10:00 A (-6d) | 2019-05-30 10:00 → 2019-05-24 10:00 A (-6d) |  | 0% → 100% | -0.17d → none |
| 49 | **Marketing** | 2019-05-30 10:00 → 2019-05-24 10:00 A (-6d) | 2019-06-24 17:00 → 2019-06-19 15:05 (-5d) | 17.75d → 17.51d | 0% → 9% |  |
| 50 | Marketing phase begins | 2019-05-30 10:00 → 2019-05-24 10:00 A (-6d) | 2019-05-30 10:00 → 2019-05-24 10:00 A (-6d) |  | 0% → 100% | -0.17d → none |
| 51 | Marketing Strategy Development | 2019-05-30 10:00 → 2019-05-28 07:00 A (-2d) | 2019-06-03 08:00 → 2019-05-28 16:25 (-6d) | 1.18d → 1.1d | 0% → 100% | -1d → none |
| 52 | Marketing Plan Development and Approval | 2019-06-03 08:00 → 2019-05-28 16:25 A (-6d) | 2019-06-03 17:00 → 2019-05-29 15:05 (-5d) | 1d → 0.83d | 0% → 60% | -1d → 0d |
| 53 | Marketing Materials | 2019-06-04 08:00 → 2019-05-29 15:05 (-6d) | 2019-06-24 17:00 → 2019-06-19 15:05 (-5d) |  |  | -1d → 0d |
| 54 | Marketing phase complete | 2019-06-24 17:00 → 2019-06-19 15:05 (-5d) | 2019-06-24 17:00 → 2019-06-19 15:05 (-5d) |  |  |  |

## Version 3 (data date 2024-05-19, saved 2024-07-09, file Remote Drone Earned Value.mpp)

Last finish stays 2019-06-19. Complete tasks 47 → 45.

Changed:

| ID | Task | Start | Finish | Duration | Complete | Total float |
| --- | --- | --- | --- | --- | --- | --- |
| 49 | **Marketing** | 2019-05-24 10:00 A → 2019-05-24 10:00 | 2019-06-19 15:05 → 2019-06-19 16:00 | 17.51d → 17.62d | 9% → 0% |  |
| 50 | Marketing phase begins | 2019-05-24 10:00 A → 2019-05-24 10:00 | 2019-05-24 10:00 A → 2019-05-24 10:00 |  | 100% → 0% | none → 0.7d |
| 51 | Marketing Strategy Development | 2019-05-28 07:00 A → 2019-05-24 10:00 (-4d) | 2019-05-28 16:25 → 2019-05-28 16:00 | 1.1d → 1.75d | 100% → 0% | none → 0d |
| 52 | Marketing Plan Development and Approval | 2019-05-28 16:25 A → 2019-05-28 16:00 | 2019-05-29 15:05 → 2019-05-29 16:00 | 0.83d → 1d | 60% → 0% |  |
| 53 | Marketing Materials | 2019-05-29 15:05 → 2019-05-29 16:00 | 2019-06-19 15:05 → 2019-06-19 16:00 |  |  |  |
| 54 | Marketing phase complete | 2019-06-19 15:05 → 2019-06-19 16:00 | 2019-06-19 15:05 → 2019-06-19 16:00 |  |  |  |
